# Juntos Planification 0.3

Schedule from MS Project, 2013-12-13 to 2014-07-11, 7 hours a day, costs in €.

## Calendars

- Standard: Mon-Fri 09:00-12:00, 14:00-18:00; Sat-Sun off. Exceptions (off unless hours are given): 2013-12-25 (Nöel), 2014-01-01 (1er de l'an).

## Resources

| Resource | Rate |
| --- | --- |
| Gabel.MOE | 54.3 |
| Mirabel.Ali | 35.7 |
| Rahmani.Ali | 35.7 |

## Schedule

| ID | WBS | Task | Duration | Start | Finish | Predecessors | Total slack | Free slack | Constraint | Resources | Work | Cost |
| --- | --- | --- | --- | --- | --- | --- | --- | --- | --- | --- | --- | --- |
| 1 | 1 | **Projet Juntos** | 149d | 2013-12-13 | 2014-07-11 |  | 0d |  |  |  | 805h | 34,792.8 |
| 2 | 1.1 | **MT1 - Recueil du besoin** | 4d | 2013-12-13 | 2013-12-18 |  | 13d | 0d |  |  | 77h | 3,139.5 |
| 3 | 1.1.1 | TE1.1 - Recueil du besoin exprimé | 1d | 2013-12-13 | 2013-12-13 |  | 8d | 0d | start no earlier than 2013-12-13 | Gabel.MOE; Mirabel.Ali; Rahmani.Ali | 21h | 879.9 |
| 4 | 1.1.2 | TE1.2 - Validation du besoin exprimé | 3d | 2013-12-16 | 2013-12-18 | 3 | 8d |  |  | Gabel.MOE; Mirabel.Ali; Rahmani.Ali | 56h | 2,259.6 |
| 5 | 1.2 | **MT2 - Spécifications fonctionnelles** | 3d | 2013-12-19 | 2013-12-23 | 2 | 18d | 0d |  |  | 35h | 1,640.1 |
| 6 | 1.2.1 | TE2.1 - Dossier des spécification de chacune des fonctions | 2d | 2013-12-19 | 2013-12-20 |  | 8d | 0d |  | Gabel.MOE | 14h | 760.2 |
| 7 | 1.2.2 | TE2.2 Validation interne du dossier fonctionnel | 1d | 2013-12-23 | 2013-12-23 | 6 | 13d |  |  | Gabel.MOE; Mirabel.Ali; Rahmani.Ali | 21h | 879.9 |
| 8 | 1.3 | **MT3 - Spécification techniques** | 4d | 2013-12-24 | 2013-12-30 | 5 | 18d | 1d |  |  | 28h | 999.6 |
| 9 | 1.3.1 | TE3.1 - Dossier des spécification de chacun des aspects | 3d | 2013-12-24 | 2013-12-27 |  | 13d | 0d |  | Rahmani.Ali | 21h | 749.7 |
| 10 | 1.3.2 | TE3.2 - Validation interne du dossier technique | 1d | 2013-12-30 | 2013-12-30 | 9 | 13d |  |  | Mirabel.Ali | 7h | 249.9 |
| 11 | 1.4 | **MT4 - Spécifications organisationnelles** | 15d | 2014-01-02 | 2014-01-22 | 8 | 19d | 0d |  |  | 63h | 3,030.3 |
| 12 | 1.4.1 | TE4.1 - Dossier d'organisation du travail "métier" | 3d | 2014-01-15 | 2014-01-17 |  | 3d | 0d |  | Gabel.MOE | 21h | 1,140.3 |
| 13 | 1.4.2 | TE4.2 - Dossier d'organisation du travail de production | 3d | 2014-01-02 | 2014-01-13 |  | 8d | 4d |  | Gabel.MOE | 21h | 1,140.3 |
| 14 | 1.4.3 | TE4.3 - Validation des dossiers organisationnels | 3d | 2014-01-20 | 2014-01-22 | 13, 12 | 4d |  |  | Mirabel.Ali | 21h | 749.7 |
| 15 | 1.5 | **MT5 - Développement logiciel** | 70d | 2014-01-23 | 2014-04-30 | 11 | 11d | 0d |  |  | 231h | 10,850.7 |
| 16 | 1.5.1 | **MT5.1 - Création de l'interface** | 22d | 2014-01-23 | 2014-02-21 | 11 | 19d | 5d |  |  | 70h | 3,801 |
| 17 | 1.5.1.1 | TE5.1.1 - Ihm global | 10d | 2014-01-23 | 2014-02-21 |  | 9d |  |  | Gabel.MOE | 70h | 3,801 |
| 18 | 1.5.2 | **MT5.2 - Développement logiciel spécifique** | 31d | 2014-03-03 | 2014-04-14 | 16 | 11d | 1d |  |  | 126h | 5,149.2 |
| 19 | 1.5.2.1 | **MT5.2.1 - Gestion de projet** | 11d | 2014-03-03 | 2014-03-17 |  | 13d | 0d |  |  | 35h | 1,900.5 |
| 20 | 1.5.2.1.1 | TE5.2.1.1 - Fk - Création de nouveau projet | 1d | 2014-03-03 | 2014-03-03 |  | 4d | 1d |  | Gabel.MOE | 7h | 380.1 |
| 21 | 1.5.2.1.2 | TE5.2.1.2 - Fk - Ouverture d'un projet | 1d | 2014-03-06 | 2014-03-06 | 20 | 10d |  | start no earlier than 2014-01-17 | Gabel.MOE | 7h | 380.1 |
| 22 | 1.5.2.1.3 | TE5.2.1.3 - Fk - Changement de projet | 1d | 2014-03-07 | 2014-03-07 | 20 | 9d |  | start no earlier than 2014-02-04 | Gabel.MOE | 7h | 380.1 |
| 23 | 1.5.2.1.4 | TE5.2.1.4 - Fk - Quiter un projet | 1d | 2014-03-17 | 2014-03-17 | 20 | 3d |  | start no earlier than 2014-02-05 | Gabel.MOE | 7h | 380.1 |
| 24 | 1.5.2.1.5 | TE5.2.1.5 - Fk - Suppresion de projet | 1d | 2014-03-05 | 2014-03-05 | 20 | 11d |  | start no earlier than 2014-02-06 | Gabel.MOE | 7h | 380.1 |

| ID | WBS | Task | Duration | Start | Finish | Predecessors | Total slack | Free slack | Constraint | Resources | Work | Cost |
| --- | --- | --- | --- | --- | --- | --- | --- | --- | --- | --- | --- | --- |
| 25 | 1.5.2.2 | **MT5.2.2 - Gestion des ticket / bug** | 10d | 2014-03-18 | 2014-03-31 | 19 | 11d | 0d |  |  | 28h | 999.6 |
| 26 | 1.5.2.2.1 | TE5.2.2.1 - Fk - Création de ticket | 1d | 2014-03-18 | 2014-03-18 |  | 3d | 0d |  | Rahmani.Ali | 7h | 249.9 |
| 27 | 1.5.2.2.2 | TE5.2.2.2 - Fk - Assignation de ticket | 1d | 2014-03-31 | 2014-03-31 | 26 | 1d |  |  | Rahmani.Ali | 7h | 249.9 |
| 28 | 1.5.2.2.3 | TE5.2.2.3 - Fk - Modification de ticket | 1d | 2014-03-21 | 2014-03-21 | 26 | 7d |  | start no earlier than 2014-02-11 | Rahmani.Ali | 7h | 249.9 |
| 29 | 1.5.2.2.4 | TE5.2.2.4 - Fk - Suppression de ticket | 1d | 2014-03-19 | 2014-03-19 | 26 | 9d |  | start no earlier than 2014-02-12 | Rahmani.Ali | 7h | 249.9 |
| 30 | 1.5.2.3 | **MT5.2.3 - Tâches / TODO Liste** | 3d | 2014-04-01 | 2014-04-03 | 25 | 13d |  |  |  | 21h | 749.7 |
| 31 | 1.5.2.3.1 | TE5.2.3.1 - Fk - Ajouter une tâche | 1d | 2014-04-01 | 2014-04-01 |  | 3d | 0d |  | Mirabel.Ali | 7h | 249.9 |
| 32 | 1.5.2.3.2 | TE5.2.3.2 - Fk - Suppression d'une tâche | 1d | 2014-04-03 | 2014-04-03 | 31 | 8d |  | start no earlier than 2014-01-16 | Mirabel.Ali | 7h | 249.9 |
| 33 | 1.5.2.3.3 | TE5.2.3.3 - Fk - Modification statut | 1d | 2014-04-02 | 2014-04-02 | 31 | 9d |  | start no earlier than 2014-02-17 | Mirabel.Ali | 7h | 249.9 |
| 34 | 1.5.2.4 | **MT5.2.4 - Messagerie** | 3d | 2014-04-01 | 2014-04-03 | 25 | 11d | 0d |  |  | 21h | 749.7 |
| 35 | 1.5.2.4.1 | TE5.2.4.1 - Fk - Canal de communication | 1d | 2014-04-01 | 2014-04-01 |  | 1d | 0d |  | Rahmani.Ali | 7h | 249.9 |
| 36 | 1.5.2.4.2 | TE5.2.4.2 - Fk - Envoie de message | 1d | 2014-04-02 | 2014-04-02 | 35 | 1d | 0d | start no earlier than 2014-01-16 | Rahmani.Ali | 7h | 249.9 |
| 37 | 1.5.2.4.3 | TE5.2.4.3 - Fk - Reception de message | 1d | 2014-04-03 | 2014-04-03 | 36 | 1d |  |  | Rahmani.Ali | 7h | 249.9 |
| 38 | 1.5.2.5 | **MT5.2.5 - Partage de fichier** | 7d | 2014-04-04 | 2014-04-14 | 34 | 11d |  |  |  | 21h | 749.7 |
| 39 | 1.5.2.5.1 | TE5.2.5.1 - Fk - Upload | 1d | 2014-04-04 | 2014-04-04 |  | 7d |  |  | Rahmani.Ali | 7h | 249.9 |
| 40 | 1.5.2.5.2 | TE5.2.5.2 - Fk - Download | 1d | 2014-04-04 | 2014-04-04 |  | 6d | 5d | start no earlier than 2014-01-16 | Mirabel.Ali | 7h | 249.9 |
| 41 | 1.5.2.5.3 | TE5.2.5.3 - Fk - Gestion des droits | 1d | 2014-04-14 | 2014-04-14 | 40 | 1d |  |  | Rahmani.Ali | 7h | 249.9 |
| 42 | 1.5.3 | **MT5.3 - Création de la base de donnée** | 3d | 2014-04-16 | 2014-04-18 | 18 | 10d | 0d |  |  | 21h | 1,140.3 |
| 43 | 1.5.3.1 | TE5.3.1 - Mise en place de la base de donnée | 3d | 2014-04-16 | 2014-04-18 |  | 10d |  |  | Gabel.MOE | 21h | 1,140.3 |
| 44 | 1.5.4 | **MT5.4 - Paramétrage progiciel** | 8d | 2014-04-21 | 2014-04-30 | 42 | 11d |  |  |  | 14h | 760.2 |
| 45 | 1.5.4.1 | TE5.4.1 - Deploiement de la base | 8d | 2014-04-21 | 2014-04-30 | 11 | 1d |  |  | Gabel.MOE | 14h | 760.2 |
| 46 | 1.6 | **MT6 - Qualification matérielle** | 11d | 2014-05-01 | 2014-05-15 | 15 | 11d | 0d |  |  | 70h | 2,889.6 |
| 47 | 1.6.1 | TE6.1 - Réseau LAN et le serveur | 2d | 2014-05-01 | 2014-05-02 |  | 10d | 8d |  | Rahmani.Ali | 14h | 499.8 |
| 48 | 1.6.2 | TE6.2 - SGBD | 2d | 2014-05-01 | 2014-05-02 | 22, 23, 24 | 1d |  |  | Gabel.MOE | 14h | 760.2 |
| 49 | 1.6.3 | TE6.3 - Postes clients internes | 2d | 2014-05-12 | 2014-05-13 | 48 | 2d | 0d |  | Mirabel.Ali | 14h | 499.8 |
| 50 | 1.6.4 | TE6.4 - Transmissions | 1d | 2014-05-14 | 2014-05-14 | 49 | 2d | 0d |  | Mirabel.Ali | 7h | 249.9 |
| 51 | 1.6.5 | TE6.5 - PV de Qualification | 1d | 2014-05-15 | 2014-05-15 | 47, 48, 49, 50 | 7d |  |  | Gabel.MOE; Mirabel.Ali; Rahmani.Ali | 21h | 879.9 |

| ID | WBS | Task | Duration | Start | Finish | Predecessors | Total slack | Free slack | Constraint | Resources | Work | Cost |
| --- | --- | --- | --- | --- | --- | --- | --- | --- | --- | --- | --- | --- |
| 52 | 1.7 | **MT7 - Recette logicielle** | 19d | 2014-05-15 | 2014-06-11 | 46, 15 | 4d | 0d |  |  | 126h | 5,019 |
| 53 | 1.7.1 | TE7.1 - Gestion de projet | 2d | 2014-05-27 | 2014-05-28 |  | 9d | 0d |  | Rahmani.Ali | 14h | 499.8 |
| 54 | 1.7.2 | TE7.2 - Gestion tickets/bugs | 2d | 2014-05-27 | 2014-05-28 |  | 1d |  |  | Gabel.MOE; Mirabel.Ali | 21h | 879.9 |
| 55 | 1.7.3 | TE7.3 - Taches / TODO list | 1d | 2014-05-15 | 2014-05-16 |  | 9d |  |  | Gabel.MOE; Rahmani.Ali | 7h | 249.9 |
| 56 | 1.7.4 | TE7.4 - Messagerie | 2d | 2014-05-16 | 2014-05-26 |  | 3d |  |  | Gabel.MOE; Mirabel.Ali | 28h | 1,260 |
| 57 | 1.7.5 | TE7.5 - Partage de fichier | 1d | 2014-05-29 | 2014-05-29 | 53 | 9d | 0d |  | Mirabel.Ali | 7h | 249.9 |
| 58 | 1.7.6 | TE7.6 - Recette d'intégration | 1d | 2014-05-30 | 2014-05-30 | 54, 53, 55, 56, 57 | 9d | 5d |  | Rahmani.Ali | 7h | 249.9 |
| 59 | 1.7.7 | TE7.7 - Tests de performances | 1d | 2014-06-09 | 2014-06-09 | 58 | 4d | 0d |  | Gabel.MOE; Mirabel.Ali | 14h | 630 |
| 60 | 1.7.8 | TE7.8 - PV de Recette | 2d | 2014-06-10 | 2014-06-11 | 59 | 4d |  |  | Mirabel.Ali; Rahmani.Ali | 28h | 999.6 |
| 61 | 1.8 | **MT8 - Mise en service régulier** | 7d | 2014-06-12 | 2014-06-20 | 52 | 4d |  |  |  | 49h | 2,139.9 |
| 62 | 1.8.1 | TE8.1 - Mise en SR sur site(s) pilote(s) | 3d | 2014-06-12 | 2014-06-16 |  | 4d | 0d |  | Gabel.MOE | 21h | 1,140.3 |
| 63 | 1.8.2 | TE8.2 - Généralisation de la mise en SR | 4d | 2014-06-17 | 2014-06-20 | 62 | 9d |  | start no earlier than 2014-05-08 | Rahmani.Ali | 28h | 999.6 |
| 64 | 1.9 | **MT9 - Bilans du projet** | 10d | 2014-06-30 | 2014-07-11 | 61 | 0d |  |  |  | 126h | 5,084.1 |
| 65 | 1.9.1 | TE9.1 - Fonctionnel | 3d | 2014-07-03 | 2014-07-07 |  | 1d | 0d |  | Rahmani.Ali | 21h | 749.7 |
| 66 | 1.9.2 | TE9.2 - Technique | 3d | 2014-06-30 | 2014-07-02 |  | 4d | 3d |  | Rahmani.Ali | 21h | 749.7 |
| 67 | 1.9.3 | TE9.3 - Organisationnel du projet | 2d | 2014-06-30 | 2014-07-02 |  | 4.5d | 3.5d |  | Mirabel.Ali; Gabel.MOE | 21h | 945 |
| 68 | 1.9.4 | TE9.4 - De Résultats | 4d | 2014-07-08 | 2014-07-11 | 67, 65, 66 | 0d |  |  | Mirabel.Ali; Rahmani.Ali; Gabel.MOE | 63h | 2,639.7 |
| 69 | 2 | **TE11 - Réunion de suivi** | 120.29d | 2014-01-06 | 2014-06-23 |  | 14.71d |  |  |  |  |  |
| 70 | 2.1 | TE11 - Réunion de suivi 3 | 2h | 2014-01-06 | 2014-01-06 |  | 134.71d |  | start no earlier than 2014-01-06 |  |  |  |
| 71 | 2.2 | TE11 - Réunion de suivi 4 | 2h | 2014-01-27 | 2014-01-27 |  | 119.71d |  | start no earlier than 2014-01-27 |  |  |  |
| 72 | 2.3 | TE11 - Réunion de suivi 5 | 2h | 2014-02-03 | 2014-02-03 |  | 120.71d |  | start no earlier than 2014-02-03 |  |  |  |
| 73 | 2.4 | TE11 - Réunion de suivi 6 | 2h | 2014-02-24 | 2014-02-24 |  | 105.71d |  | start no earlier than 2014-02-24 |  |  |  |
| 74 | 2.5 | TE11 - Réunion de suivi 7 | 2h | 2014-04-07 | 2014-04-07 |  | 75.71d |  | start no earlier than 2014-04-05 |  |  |  |
| 75 | 2.6 | TE11 - Réunion de suivi 8 | 2h | 2014-04-21 | 2014-04-21 |  | 65.71d |  | start no earlier than 2014-04-21 |  |  |  |
| 76 | 2.7 | TE11 - Réunion de suivi 9 | 2h | 2014-05-05 | 2014-05-05 |  | 55.71d |  | start no earlier than 2014-05-05 |  |  |  |
| 77 | 2.8 | TE11 - Réunion de suivi 10 | 2h | 2014-05-19 | 2014-05-19 |  | 45.71d |  | start no earlier than 2014-05-19 |  |  |  |
| 78 | 2.9 | TE11 - Réunion de suivi 11 | 2h | 2014-06-02 | 2014-06-02 |  | 35.71d |  | start no earlier than 2014-06-02 |  |  |  |
| 79 | 2.10 | TE11 - Réunion de suivi 11 | 2h | 2014-06-23 | 2014-06-23 |  | 20.71d |  | start no earlier than 2014-06-23 |  |  |  |
