# Juntos Planification 0.6

Schedule from MS Project, 2013-12-13 to 2014-07-10, status date 2014-07-03, 4 hours a day, costs in €, A marks actual dates.

## Calendars

- Standard: Mon-Fri 09:00-12:00, 14:00-18:00; Sat-Sun off. Exceptions (off unless hours are given): 2013-12-25 (Nöel), 2014-01-01 (1er de l'an).
- Calendrier cours: Mon-Fri 18:00-21:00; Sat 14:00-18:00; Sun off. Exceptions (off unless hours are given): 2014-01-06 to 2014-01-11 (Semaine cours), 2014-01-20 to 2014-01-25 (Semaine cours), 2014-02-03 to 2014-02-08 (Semaine cours), 2014-02-24 to 2014-03-01 (Semaine cours), 2014-03-17 to 2014-03-22 (Semaine cours), 2014-04-07 to 2014-04-12 (Semaine cours), 2014-04-28 to 2014-05-03 (Semaine cours), 2014-05-12 to 2014-05-17 (Semaine cours), 2014-05-26 to 2014-05-31 (Semaine cours), 2014-06-16 to 2014-06-21 (Semaine cours).

## Resources

| Resource | Rate |
| --- | --- |
| Gabel.MOA | 54.3 |
| Mirabel.AL1 | 35.7 |
| Rahmani.AL2 | 35.7 |
| Gabel.MOE | 45.7 |
| Gabel.AL3 | 35.7 |
| Mirabel.DBA | 35.7 |
| Sananes.UTM |  |

## Schedule

| ID | WBS | Task | Duration | Start | Finish | Predecessors | Complete | Baseline start | Baseline finish | Baseline duration | Constraint | Resources | Work | Actual work | Cost | Baseline cost | Actual cost |
| --- | --- | --- | --- | --- | --- | --- | --- | --- | --- | --- | --- | --- | --- | --- | --- | --- | --- |
| 1 | 1 | **Projet Juntos** | 257.25d | 2013-12-13 A | 2014-07-10 A |  | 100% | 2013-12-13 | 2014-07-11 | 259d |  |  | 560h | 560h | 21,328.2 | 21,693.8 | 21,328.2 |
| 2 | 1.1 | **MT1 - Recueil du besoin** | 8.75d | 2013-12-13 A | 2013-12-20 A |  | 100% | 2013-12-13 | 2013-12-20 | 8.75d |  |  | 34h | 34h | 1,303.2 | 1,303.2 | 1,303.2 |
| 3 | 1.1.1 | TE1.1 - Recueil du besoin exprimé | 14h | 2013-12-13 A | 2013-12-18 A |  | 100% | 2013-12-13 | 2013-12-18 | 14h | start no earlier than 2013-12-13 | Gabel.MOA | 14h | 14h | 760.2 | 760.2 | 760.2 |
| 4 | 1.1.2 | TE1.2 - Validation du besoin exprimé | 20h | 2013-12-18 A | 2013-12-20 A | 3 | 100% | 2013-12-18 | 2013-12-20 | 20h |  | Gabel.MOA; Sananes.UTM | 20h | 20h | 543 | 543 | 543 |
| 5 | 1.2 | **MT2 - Spécifications fonctionnelles** | 8.75d | 2013-12-23 A | 2013-12-30 A | 2 | 100% | 2013-12-23 | 2013-12-30 | 8.75d |  |  | 34h | 34h | 1,194.6 | 1,194.6 | 1,194.6 |
| 6 | 1.2.1 | TE2.1 - Dossier des spécifications fonctionnelles | 10h | 2013-12-26 A | 2013-12-30 A |  | 100% | 2013-12-26 | 2013-12-30 | 10h |  | Gabel.MOA | 10h | 10h | 543 | 543 | 543 |
| 7 | 1.2.2 | TE2.2 - Validation des spécifications fonctionnelles | 24h | 2013-12-23 A | 2013-12-25 A |  | 100% | 2013-12-23 | 2013-12-25 | 24h |  | Gabel.MOA; Sananes.UTM | 24h | 24h | 651.6 | 651.6 | 651.6 |
| 8 | 1.3 | **MT3 - Spécification techniques** | 17.5d | 2013-12-30 A | 2014-01-14 A | 5 | 100% | 2013-12-30 | 2014-01-14 | 17.5d |  |  | 38h | 38h | 1,586.6 | 1,586.6 | 1,586.6 |
| 9 | 1.3.1 | TE3.1 - Dossier des spécifications de chacun des aspects | 15h | 2013-12-30 A | 2014-01-04 A |  | 100% | 2013-12-30 | 2014-01-04 | 15h |  | Gabel.MOE; Rahmani.AL2 | 30h | 30h | 1,221 | 1,221 | 1,221 |
| 10 | 1.3.2 | TE3.2 - Validation des spécifications techniques | 8h | 2013-12-30 A | 2014-01-14 A |  | 100% | 2013-12-30 | 2014-01-14 | 8h |  | Gabel.MOE | 8h | 8h | 365.6 | 365.6 | 365.6 |
| 11 | 1.4 | **MT4 - Spécifications organisationnelles** | 22.75d | 2014-01-14 A | 2014-01-31 A | 8 | 100% | 2014-01-14 | 2014-01-31 | 22.75d |  |  | 42h | 42h | 1,905.4 | 1,905.4 | 1,905.4 |
| 12 | 1.4.1 | TE4.1 - Dossier d'organisation du travail "métier" | 10h | 2014-01-14 A | 2014-01-16 A |  | 100% | 2014-01-14 | 2014-01-16 | 10h |  | Gabel.MOA | 10h | 10h | 543 | 543 | 543 |
| 13 | 1.4.2 | TE4.2 - Dossier d'organisation du travail de production | 12h | 2014-01-17 A | 2014-01-28 A | 12 | 100% | 2014-01-17 | 2014-01-28 | 12h |  | Gabel.MOE | 12h | 12h | 548.4 | 548.4 | 548.4 |
| 14 | 1.4.3 | TE4.3 - Validation des dossiers organisationnels | 10h | 2014-01-28 A | 2014-01-31 A | 13, 12 | 100% | 2014-01-28 | 2014-01-31 | 10h |  | Gabel.MOE; Rahmani.AL2 | 20h | 20h | 814 | 814 | 814 |
| 15 | 1.5 | **MT5 - Développement logiciel** | 122.5d | 2014-02-01 A | 2014-05-09 A | 11 | 100% | 2014-02-01 | 2014-05-09 | 122.5d |  |  | 264h | 264h | 9,624.8 | 9,624.8 | 9,624.8 |
| 16 | 1.5.1 | **MT5.1 - Création de l'interface** | 26.25d | 2014-02-01 A | 2014-02-21 A | 11 | 100% | 2014-02-01 | 2014-02-21 | 26.25d |  |  | 35h | 35h | 1,249.5 | 1,249.5 | 1,249.5 |
| 17 | 1.5.1.1 | TE5.1.1 - IHM client | 25h | 2014-02-01 A | 2014-02-17 A |  | 100% | 2014-02-01 | 2014-02-17 | 25h |  | Mirabel.AL1 | 25h | 25h | 892.5 | 892.5 | 892.5 |
| 18 | 1.5.1.2 | TE5.1.2 - IHM Administration | 10h | 2014-02-18 A | 2014-02-21 A |  | 100% | 2014-02-18 | 2014-02-21 | 10h |  | Mirabel.AL1 | 10h | 10h | 357 | 357 | 357 |
| 19 | 1.5.2 | **MT5.2 - Création de la base de données** | 17.5d | 2014-02-21 A | 2014-03-07 A | 16 | 100% | 2014-02-21 | 2014-03-07 | 17.5d |  |  | 40h | 40h | 1,628 | 1,628 | 1,628 |
| 20 | 1.5.2.1 | TE5.2.1 - Mise en place du modèle de données (MCD) | 20h | 2014-02-21 A | 2014-03-07 A |  | 100% | 2014-02-21 | 2014-03-07 | 20h |  | Mirabel.DBA; Gabel.MOE | 32h | 32h | 1,342.4 | 1,342.4 | 1,342.4 |
| 21 | 1.5.2.2 | TE5.2.2 - Mise en place de la base de données | 8h | 2014-02-21 A | 2014-03-03 A |  | 100% | 2014-02-21 | 2014-03-03 | 8h |  | Mirabel.DBA | 8h | 8h | 285.6 | 285.6 | 285.6 |
| 22 | 1.5.3 | **MT5.3 - Développement logiciel spécifique** | 78.75d | 2014-03-07 A | 2014-05-09 A | 16, 19 | 100% | 2014-03-07 | 2014-05-09 | 78.75d |  |  | 189h | 189h | 6,747.3 | 6,747.3 | 6,747.3 |
| 23 | 1.5.3.1 | **MT5.3.1 - Gestion de projet** | 28d | 2014-03-07 A | 2014-03-31 A |  | 100% | 2014-03-07 | 2014-03-31 | 28d |  |  | 41h | 41h | 1,463.7 | 1,463.7 | 1,463.7 |
| 24 | 1.5.3.1.1 | TE5.3.1.1 - F1 - Création de nouveau projet | 12h | 2014-03-07 A | 2014-03-12 A |  | 100% | 2014-03-07 | 2014-03-12 | 12h |  | Rahmani.AL2 | 12h | 12h | 428.4 | 428.4 | 428.4 |
| 25 | 1.5.3.1.2 | TE5.3.1.2 - F2 - Ouverture d'un projet | 1h | 2014-03-12 A | 2014-03-12 A | 24 | 100% | 2014-03-12 | 2014-03-12 | 1h | start no earlier than 2014-01-17 | Rahmani.AL2 | 1h | 1h | 35.7 | 35.7 | 35.7 |
| 26 | 1.5.3.1.3 | TE5.3.1.3 - F3 - Modification de projet | 8h | 2014-03-14 A | 2014-03-24 A | 24 | 100% | 2014-03-14 | 2014-03-24 | 8h | start no earlier than 2014-02-04 | Rahmani.AL2 | 8h | 8h | 285.6 | 285.6 | 285.6 |
| 27 | 1.5.3.1.4 | TE5.3.1.4 - F4 - Quiter un projet | 7h | 2014-03-28 A | 2014-03-31 A | 24 | 100% | 2014-03-28 | 2014-03-31 | 7h | start no earlier than 2014-02-05 | Rahmani.AL2 | 7h | 7h | 249.9 | 249.9 | 249.9 |
| 28 | 1.5.3.1.5 | TE5.3.1.5 - F5 - Suppresion de projet | 13h | 2014-03-25 A | 2014-03-29 A | 24 | 100% | 2014-03-25 | 2014-03-29 | 13h | start no earlier than 2014-02-06 | Rahmani.AL2 | 13h | 13h | 464.1 | 464.1 | 464.1 |

Notes:
- 14: Augmentation de la charge de travail pour quelques modifications : temps total : 10h
- 25: Tâche réalisé en meme temps que la création, sur le même créneau
- 28: Augmentation de 3h, car on a voulu garder une trace du projet supprimé et donc ne pas le supprimer physiquement mais juste visuellement pour l'utilisateur

| ID | WBS | Task | Duration | Start | Finish | Predecessors | Complete | Baseline start | Baseline finish | Baseline duration | Constraint | Resources | Work | Actual work | Cost | Baseline cost | Actual cost |
| --- | --- | --- | --- | --- | --- | --- | --- | --- | --- | --- | --- | --- | --- | --- | --- | --- | --- |
| 29 | 1.5.3.2 | **MT5.3.2 - Gestion des tickets / bugs** | 26.25d | 2014-03-31 A | 2014-04-21 A | 23 | 100% | 2014-03-31 | 2014-04-21 | 26.25d |  |  | 43h | 43h | 1,535.1 | 1,535.1 | 1,535.1 |
| 30 | 1.5.3.2.1 | TE5.3.2.1 - F1 - Création de ticket | 12h | 2014-03-31 A | 2014-04-04 A |  | 100% | 2014-03-31 | 2014-04-04 | 12h |  | Mirabel.AL1 | 12h | 12h | 428.4 | 428.4 | 428.4 |
| 31 | 1.5.3.2.2 | TE5.3.2.2 - F2 - Assignation de ticket | 7h | 2014-04-15 A | 2014-04-17 A | 30 | 100% | 2014-04-15 | 2014-04-17 | 7h |  | Mirabel.AL1 | 7h | 7h | 249.9 | 249.9 | 249.9 |
| 32 | 1.5.3.2.3 | TE5.3.2.3 - F3 - Modification de ticket | 9h | 2014-04-04 A | 2014-04-14 A | 30 | 100% | 2014-04-04 | 2014-04-14 | 9h | start no earlier than 2014-02-11 | Mirabel.AL1 | 9h | 9h | 321.3 | 321.3 | 321.3 |
| 33 | 1.5.3.2.4 | TE5.3.2.4 - F4 - Suppression de ticket | 8h | 2014-04-18 A | 2014-04-21 A | 30 | 100% | 2014-04-18 | 2014-04-21 | 8h |  | Mirabel.AL1 | 8h | 8h | 285.6 | 285.6 | 285.6 |
| 34 | 1.5.3.2.5 | TE5.3.2.5 - F5 - Ajout de commentaires | 7h | 2014-04-18 A | 2014-04-19 A | 30 | 100% | 2014-04-18 | 2014-04-19 | 7h |  | Rahmani.AL2 | 7h | 7h | 249.9 | 249.9 | 249.9 |
| 35 | 1.5.3.3 | **MT5.3.3 - Tâches / TODO Liste** | 21d | 2014-03-31 A | 2014-04-16 A | 29SS | 100% | 2014-03-31 | 2014-04-16 | 21d |  |  | 20h | 20h | 714 | 714 | 714 |
| 36 | 1.5.3.3.1 | TE5.3.3.1 - F1 - Ajouter une tâche | 8h | 2014-03-31 A | 2014-04-02 A |  | 100% | 2014-03-31 | 2014-04-02 | 8h |  | Gabel.AL3 | 8h | 8h | 285.6 | 285.6 | 285.6 |
| 37 | 1.5.3.3.2 | TE5.3.3.2 - F2 - Suppression d'une tâche | 8h | 2014-04-14 A | 2014-04-16 A | 36 | 100% | 2014-04-14 | 2014-04-16 | 8h | start no earlier than 2014-01-16 | Gabel.AL3 | 8h | 8h | 285.6 | 285.6 | 285.6 |
| 38 | 1.5.3.3.3 | TE5.3.3.3 - F3 - Modification statut | 4h | 2014-04-03 A | 2014-04-04 A | 36 | 100% | 2014-04-03 | 2014-04-04 | 4h | start no earlier than 2014-02-17 | Gabel.AL3 | 4h | 4h | 142.8 | 142.8 | 142.8 |
| 39 | 1.5.3.4 | **MT5.3.4 - Messagerie** | 22.75d | 2014-03-31 A | 2014-04-17 A | 29SS | 100% | 2014-03-31 | 2014-04-17 | 22.75d |  |  | 28h | 28h | 999.6 | 999.6 | 999.6 |
| 40 | 1.5.3.4.1 | TE5.3.4.1 - F1 - Canal de communication | 12h | 2014-03-31 A | 2014-04-04 A |  | 100% | 2014-03-31 | 2014-04-04 | 12h |  | Rahmani.AL2 | 12h | 12h | 428.4 | 428.4 | 428.4 |
| 41 | 1.5.3.4.2 | TE5.3.4.2 - F2 - Envoie de message | 9h | 2014-04-04 A | 2014-04-14 A | 40 | 100% | 2014-04-04 | 2014-04-14 | 9h | start no earlier than 2014-01-16 | Rahmani.AL2 | 9h | 9h | 321.3 | 321.3 | 321.3 |
| 42 | 1.5.3.4.3 | TE5.3.4.3 - F3 - Reception de message | 7h | 2014-04-15 A | 2014-04-17 A | 41 | 100% | 2014-04-15 | 2014-04-17 | 7h |  | Rahmani.AL2 | 7h | 7h | 249.9 | 249.9 | 249.9 |
| 43 | 1.5.3.5 | **MT5.3.5 - Partage de fichier** | 17.5d | 2014-04-21 A | 2014-05-05 A | 23, 29, 35, 39 | 100% | 2014-04-21 | 2014-05-05 | 17.5d |  |  | 30h | 30h | 1,071 | 1,071 | 1,071 |
| 44 | 1.5.3.5.1 | TE5.3.5.1 - F1 - Upload | 12h | 2014-04-21 A | 2014-05-05 A |  | 100% | 2014-04-21 | 2014-05-05 | 12h |  | Rahmani.AL2 | 12h | 12h | 428.4 | 428.4 | 428.4 |
| 45 | 1.5.3.5.2 | TE5.3.5.2 - F2 - Download | 10h | 2014-04-21 A | 2014-04-24 A |  | 100% | 2014-04-21 | 2014-04-24 | 10h | start no earlier than 2014-01-16 | Mirabel.AL1 | 10h | 10h | 357 | 357 | 357 |
| 46 | 1.5.3.5.3 | TE5.3.5.3 - F3 - Gestion des droits | 8h | 2014-04-25 A | 2014-05-05 A | 45 | 100% | 2014-04-25 | 2014-05-05 | 8h |  | Rahmani.AL2 | 8h | 8h | 285.6 | 285.6 | 285.6 |
| 47 | 1.5.3.6 | **MT5.3.6 - Gestion des tests** | 5.25d | 2014-04-16 A | 2014-04-21 A | 23, 35 | 100% | 2014-04-16 | 2014-04-21 | 5.25d |  |  | 14h | 14h | 499.8 | 499.8 | 499.8 |
| 48 | 1.5.3.6.1 | TE5.3.6.1 - F1 - Création d'une procédure | 5h | 2014-04-16 A | 2014-04-18 A |  | 100% | 2014-04-16 | 2014-04-18 | 5h |  | Gabel.AL3 | 5h | 5h | 178.5 | 178.5 | 178.5 |
| 49 | 1.5.3.6.2 | TE5.3.6.2 - F2 - Modification d'une procédure | 5h | 2014-04-18 A | 2014-04-19 A | 48 | 100% | 2014-04-18 | 2014-04-19 | 5h |  | Gabel.AL3 | 5h | 5h | 178.5 | 178.5 | 178.5 |
| 50 | 1.5.3.6.3 | TE5.3.6.3 - F3 - Suppression d'une procédure | 4h | 2014-04-19 A | 2014-04-21 A | 48 | 100% | 2014-04-19 | 2014-04-21 | 4h |  | Gabel.AL3 | 4h | 4h | 142.8 | 142.8 | 142.8 |
| 51 | 1.5.3.7 | **MT5.3.7 - Gestion des échéances** | 7d | 2014-05-05 A | 2014-05-09 A | 23, 29, 35, 39, 43, 47 | 100% | 2014-05-05 | 2014-05-09 | 7d |  |  | 13h | 13h | 464.1 | 464.1 | 464.1 |
| 52 | 1.5.3.7.1 | TE5.3.7.1 - F1 - Consulter les échéances | 8h | 2014-05-05 A | 2014-05-08 A |  | 100% | 2014-05-05 | 2014-05-08 | 8h | finish no earlier than 2014-05-05 | Rahmani.AL2 | 8h | 8h | 285.6 | 285.6 | 285.6 |
| 53 | 1.5.3.7.2 | TE5.3.7.2 - F2 - Modifier les échéances | 5h | 2014-05-08 A | 2014-05-09 A | 52 | 100% | 2014-05-08 | 2014-05-09 | 5h |  | Rahmani.AL2 | 5h | 5h | 178.5 | 178.5 | 178.5 |

Notes:
- 34: Revoir l'ajout et la "lecture seule"
- 45: Problème pour le download de fichier avec l'extension xlsx. / Le reste est fais : 75%

| ID | WBS | Task | Type | Duration | Start | Finish | Predecessors | Complete | Baseline start | Baseline finish | Baseline duration | Constraint | Calendar | Resources | Work | Actual work | Cost | Baseline cost | Actual cost |
| --- | --- | --- | --- | --- | --- | --- | --- | --- | --- | --- | --- | --- | --- | --- | --- | --- | --- | --- | --- |
| 54 | 1.6 | **MT6 - Qualification matérielle** |  | 17.5d | 2014-05-10 A | 2014-05-24 A | 15 | 100% | 2014-05-10 | 2014-05-24 | 17.5d |  |  |  | 22h | 22h | 885.4 | 1,251 | 885.4 |
| 55 | 1.6.1 | TE6.2 - SGBD |  | 12h | 2014-05-10 A | 2014-05-21 A | 26, 27, 28 | 100% | 2014-05-10 | 2014-05-21 | 12h |  |  | Mirabel.DBA | 12h | 12h | 428.4 | 428.4 | 428.4 |
| 56 | 1.6.2 | TE6.3 - PV de Qualification |  | 10h | 2014-05-21 A | 2014-05-24 A | 55 | 100% | 2014-05-21 | 2014-05-24 | 10h |  |  | Gabel.MOE | 10h | 10h | 457 | 457 | 457 |
| 57 | 1.7 | **MT7 - Recette logicielle** |  | 42d | 2014-05-24 A | 2014-06-26 A | 54, 15 | 100% | 2014-05-24 | 2014-06-27 | 43.75d |  |  |  | 75h | 75h | 2,677.5 | 2,677.5 | 2,677.5 |
| 58 | 1.7.1 | TE7.1 - Gestion de projet |  | 10h | 2014-05-24 A | 2014-06-04 A |  | 100% | 2014-05-24 | 2014-06-04 | 10h |  |  | Rahmani.AL2 | 10h | 10h | 357 | 357 | 357 |
| 59 | 1.7.2 | TE7.2 - Gestion tickets/bugs |  | 9h | 2014-05-24 A | 2014-06-04 A |  | 100% | 2014-05-24 | 2014-06-04 | 9h |  |  | Mirabel.AL1 | 9h | 9h | 321.3 | 321.3 | 321.3 |
| 60 | 1.7.3 | TE7.3 - Taches / TODO list |  | 7h | 2014-05-24 A | 2014-06-03 A |  | 100% | 2014-05-24 | 2014-06-03 | 7h |  |  | Gabel.AL3 | 7h | 7h | 249.9 | 249.9 | 249.9 |
| 61 | 1.7.4 | TE7.4 - Messagerie |  | 8h | 2014-06-04 A | 2014-06-07 A | 59 | 100% | 2014-06-04 | 2014-06-07 | 8h |  |  | Mirabel.AL1 | 8h | 8h | 285.6 | 285.6 | 285.6 |
| 62 | 1.7.5 | TE7.5 - Partage de fichier |  | 7h | 2014-06-07 A | 2014-06-10 A | 58 | 100% | 2014-06-09 | 2014-06-11 | 7h |  |  | Mirabel.AL1 | 7h | 7h | 249.9 | 249.9 | 249.9 |
| 63 | 1.7.6 | TE7.6 - Recette d'intégration |  | 12h | 2014-06-10 A | 2014-06-14 A | 59, 58, 60, 61, 62 | 100% | 2014-06-11 | 2014-06-14 | 12h |  |  | Rahmani.AL2 | 12h | 12h | 428.4 | 428.4 | 428.4 |
| 64 | 1.7.7 | TE7.7 - Tests de performances |  | 6h | 2014-06-14 A | 2014-06-23 A | 63 | 100% | 2014-06-23 | 2014-06-24 | 6h |  |  | Gabel.AL3 | 6h | 6h | 214.2 | 214.2 | 214.2 |
| 65 | 1.7.8 | TE7.8 - PV de Recette |  | 8h | 2014-06-24 A | 2014-06-26 A | 64 | 100% | 2014-06-25 | 2014-06-27 | 8h |  |  | Rahmani.AL2; Mirabel.AL1 | 16h | 16h | 571.2 | 571.2 | 571.2 |
| 66 | 1.8 | **MT8 - Mise en service régulier** |  | 7d | 2014-06-26 A | 2014-07-02 A | 57 | 100% | 2014-06-27 | 2014-07-03 | 7d |  |  |  | 16h | 16h | 731.2 | 731.2 | 731.2 |
| 67 | 1.8.1 | TE8.1 - Mise en SR sur site(s) pilote(s) |  | 7h | 2014-06-26 A | 2014-06-28 A |  | 100% | 2014-06-27 | 2014-06-30 | 7h |  |  | Gabel.MOE | 7h | 7h | 319.9 | 319.9 | 319.9 |
| 68 | 1.8.2 | TE8.2 - Généralisation de la mise en SR |  | 9h | 2014-06-28 A | 2014-07-02 A | 67 | 100% | 2014-06-30 | 2014-07-03 | 9h | start no earlier than 2014-05-08 |  | Gabel.MOE | 9h | 9h | 411.3 | 411.3 | 411.3 |
| 69 | 1.9 | **MT9 - Bilans du projet** |  | 10.5d | 2014-07-02 A | 2014-07-10 A | 66 | 100% | 2014-07-03 | 2014-07-11 | 10.5d |  |  |  | 35h | 35h | 1,419.5 | 1,419.5 | 1,419.5 |
| 70 | 1.9.1 | TE9.1 - Fonctionnel |  | 8h | 2014-07-02 A | 2014-07-05 A |  | 100% | 2014-07-03 | 2014-07-05 | 8h |  |  | Mirabel.AL1 | 8h | 8h | 285.6 | 285.6 | 285.6 |
| 71 | 1.9.2 | TE9.2 - Technique |  | 10h | 2014-07-02 A | 2014-07-05 A |  | 100% | 2014-07-03 | 2014-07-07 | 10h |  |  | Rahmani.AL2 | 10h | 10h | 357 | 357 | 357 |
| 72 | 1.9.3 | TE9.3 - Organisationnel du projet |  | 5h | 2014-07-02 A | 2014-07-04 A |  | 100% | 2014-07-03 | 2014-07-05 | 5h |  |  | Gabel.MOE | 5h | 5h | 228.5 | 228.5 | 228.5 |
| 73 | 1.9.4 | TE9.4 - De Résultats |  | 12h | 2014-07-05 A | 2014-07-10 A | 72, 70, 71 | 100% | 2014-07-07 | 2014-07-11 | 12h |  |  | Gabel.MOE | 12h | 12h | 548.4 | 548.4 | 548.4 |
| 74 | 2 | **TE10 - Réunion de suivi** |  | 81d | 2013-12-16 A | 2014-06-23 A |  | 100% | 2013-12-16 | 2014-06-23 | 81d |  | Calendrier cours |  |  |  |  |  |  |
| 75 | 2.1 | TE10 - Réunion de suivi 1 | manual | 1h | 2013-12-16 A | 2013-12-16 A |  | 100% | 2013-12-16 | 2013-12-16 | 1h | start no earlier than 2013-12-16 | Calendrier cours |  |  |  |  |  |  |
| 76 | 2.2 | TE10 - Réunion de suivi 2 | manual | 1h | 2014-01-13 A | 2014-01-13 A |  | 100% | 2014-01-13 | 2014-01-13 | 1h | start no earlier than 2014-01-06 | Calendrier cours |  |  |  |  |  |  |
| 77 | 2.3 | TE10 - Réunion de suivi 3 | manual | 1h | 2014-01-27 A | 2014-01-27 A |  | 100% | 2014-01-27 | 2014-01-27 | 1h | start no earlier than 2014-01-27 | Calendrier cours |  |  |  |  |  |  |
| 78 | 2.4 | TE10 - Réunion de suivi 4 | manual | 1h | 2014-02-17 A | 2014-02-17 A |  | 100% | 2014-02-17 | 2014-02-17 | 1h | start no earlier than 2014-02-17 | Calendrier cours |  |  |  |  |  |  |
| 79 | 2.5 | TE10 - Réunion de suivi 5 | manual | 1h | 2014-03-10 A | 2014-03-10 A |  | 100% | 2014-03-10 | 2014-03-10 | 1h | start no earlier than 2014-03-10 | Calendrier cours |  |  |  |  |  |  |
| 80 | 2.6 | TE10 - Réunion de suivi 6 | manual | 1h | 2014-03-31 A | 2014-03-31 A |  | 100% | 2014-03-31 | 2014-03-31 | 1h | start no earlier than 2014-03-31 | Calendrier cours |  |  |  |  |  |  |
| 81 | 2.7 | TE10 - Réunion de suivi 7 | manual | 1h | 2014-04-21 A | 2014-04-21 A |  | 100% | 2014-04-21 | 2014-04-21 | 1h | start no earlier than 2014-04-21 | Calendrier cours |  |  |  |  |  |  |
| 82 | 2.8 | TE10 - Réunion de suivi 8 | manual | 1h | 2014-05-19 A | 2014-05-19 A |  | 100% | 2014-05-19 | 2014-05-19 | 1h | start no earlier than 2014-05-12 | Calendrier cours |  |  |  |  |  |  |
| 83 | 2.9 | TE10 - Réunion de suivi 9 | manual | 1h | 2014-06-02 A | 2014-06-02 A |  | 100% | 2014-06-02 | 2014-06-02 | 1h | start no earlier than 2014-06-02 | Calendrier cours |  |  |  |  |  |  |
| 84 | 2.10 | TE10 - Réunion de suivi 10 | manual | 1h | 2014-06-23 A | 2014-06-23 A |  | 100% | 2014-06-23 | 2014-06-23 | 1h | start no earlier than 2014-06-23 | Calendrier cours |  |  |  |  |  |  |
| 88 | 2.11 | Suppression tache TE6.1 |  | 1d? | 2013-12-17 A | 2013-12-17 A |  | 100% |  |  |  |  |  |  |  |  |  |  |  |

Notes:
- 58: On peut encore écrire sur un projet "fermée". / Corrigée au passage
- 61: Certains messages n'étaient pas encodées en utf8. Corrigé au passage
- 64: Optimisation SQL faite + Optimisation sur les boucles d'ajout
- 70: Tout est OK après la recette
- 71: Toutes les fonctionnalités sont implémentées
- 77: Pas faite, un des membres non disponibles donc reporté au 17 février date de la prochaine réunion
- 84: Résumé : Fin de projet 1 semaine plus tot que prévu, bon cadrage du projet et bonne entente de l'équipe
- 88: Suppresion Réseau LAN et serveur car pas utilisé
